# Plan de trabajo AFIRME Simulador de captación

How a schedule from MS Project changed from version to version. A marks actual dates.

## Version 1 (saved 2016-04-22)

Note of the change: Actualización del plan de trabajo

| ID | WBS | Task | Duration | Start | Finish | Predecessors | Total float |
| --- | --- | --- | --- | --- | --- | --- | --- |
| 1 | 1 | **Proyecto Simulador de Captacion** | 9d | 2016-04-26 | 2016-05-06 |  |  |
| 2 | 1.1 | **Diseño de banner** | 4d | 2016-04-26 | 2016-04-29 |  | 5d |
| 3 |  | Boceto del banner | 1d | 2016-04-26 | 2016-04-26 |  | 5d |
| 4 |  | Recopilación y retoque de imágenes para el banner | 2d | 2016-04-27 | 2016-04-28 | 3 | 5d |
| 5 |  | Integración y armado del banner | 1d | 2016-04-29 | 2016-04-29 | 4 | 5d |
| 6 | 1.2 | **Diseño de interfaces** | 8d | 2016-04-26 | 2016-05-05 |  | 1d |
| 7 | 1.2.1 | **Front-end** | 3d | 2016-04-26 | 2016-04-28 |  | 1d |
| 8 | 1.2.1.1 | **TDC** | 2d | 2016-04-26 | 2016-04-27 |  | 1d |
| 9 |  | Creacion de campos de captura | 1d | 2016-04-26 | 2016-04-26 |  | 2d |
| 10 |  | Demostracion del calculo de pagos a plazos | 1d | 2016-04-26 | 2016-04-26 |  | 2d |
| 11 | 1.2.1.1.3 | **Boton de tramite de TDC** | 1d | 2016-04-26 | 2016-04-26 |  | 1d |
| 12 |  | Crear boton de enlace | 1d | 2016-04-26 | 2016-04-26 |  | 1d |
| 13 |  | Crear Pop-ups de la documentacion para tramite de la tarjeta en sucursal | 1d | 2016-04-26 | 2016-04-26 |  | 1d |
| 14 | 1.2.1.1.4 | **Boton Legal** | 1d | 2016-04-27 | 2016-04-27 | 11 | 1d |
| 15 |  | Crear boton de enlace | 1d | 2016-04-27 | 2016-04-27 | 11 | 1d |
| 16 |  | Crear la informacion legal de la promocion | 1d | 2016-04-27 | 2016-04-27 | 11 | 1d |
| 17 | 1.2.1.1.5 | **Boton de enviar informacion** | 1d | 2016-04-27 | 2016-04-27 | 11 | 1d |
| 18 |  | Crear boton de enlace | 1d | 2016-04-27 | 2016-04-27 | 11 | 1d |
| 19 |  | Crear formulario para que el prospecto sea contactado | 1d | 2016-04-27 | 2016-04-27 | 11 | 1d |
| 20 | 1.2.1.2 | **Hipotecario** | 2d | 2016-04-26 | 2016-04-27 |  | 3d |
| 21 |  | Creacion de campos de captura | 1d | 2016-04-26 | 2016-04-26 |  | 4d |
| 22 |  | Creacion de campos a seleccionar (3) | 1d | 2016-04-26 | 2016-04-26 |  | 4d |
| 23 |  | Demostracion del calculo de pagos a plazos | 1d | 2016-04-26 | 2016-04-26 |  | 3d |
| 24 | 1.2.1.2.4 | **Boton de tramite de credito hipotecario** | 1d | 2016-04-27 | 2016-04-27 | 23 | 3d |
| 25 |  | Crear boton de enlace | 1d | 2016-04-27 | 2016-04-27 | 23 | 3d |
| 26 |  | Crear Pop-ups de la documentacion para tramite de la tarjeta en sucursal | 1d | 2016-04-27 | 2016-04-27 | 23 | 3d |
| 27 | 1.2.1.2.5 | **Boton Legal** | 1d | 2016-04-27 | 2016-04-27 | 23 | 3d |
| 28 |  | Crear boton de enlace | 1d | 2016-04-27 | 2016-04-27 | 23 | 3d |
| 29 |  | Crear la informacion legal de la promocion | 1d | 2016-04-27 | 2016-04-27 | 23 | 3d |
| 30 | 1.2.1.2.6 | **Boton de enviar informacion** | 1d | 2016-04-27 | 2016-04-27 | 23 | 3d |
| 31 |  | Crear boton de enlace | 1d | 2016-04-27 | 2016-04-27 | 23 | 3d |
| 32 |  | Crear formulario para que el prospecto sea contactado | 1d | 2016-04-27 | 2016-04-27 | 23 | 3d |
| 33 | 1.2.1.3 | **Nomina** | 1d | 2016-04-28 | 2016-04-28 | 8, 20 | 4d |
| 34 |  | Creacion de campos de captura | 1d | 2016-04-28 | 2016-04-28 | 8, 20 | 4d |
| 35 |  | Demostracion del calculo de pagos a plazos | 1d | 2016-04-28 | 2016-04-28 | 8, 20 | 4d |
| 36 | 1.2.1.3.3 | **Boton de tramite de credito de nomina** | 1d | 2016-04-28 | 2016-04-28 | 8, 20 | 4d |
| 37 |  | Crear boton de enlace | 1d | 2016-04-28 | 2016-04-28 | 8, 20 | 4d |
| 38 |  | Crear Pop-ups de la documentacion para tramite de la tarjeta en sucursal | 1d | 2016-04-28 | 2016-04-28 | 8, 20 | 4d |
| 39 | 1.2.1.3.4 | **Boton Legal** | 1d | 2016-04-28 | 2016-04-28 | 8, 20 | 4d |
| 40 |  | Crear boton de enlace | 1d | 2016-04-28 | 2016-04-28 | 8, 20 | 4d |
| 41 |  | Crear la informacion legal de la promocion | 1d | 2016-04-28 | 2016-04-28 | 8, 20 | 4d |
| 42 | 1.2.1.3.5 | **Boton de enviar informacion** | 1d | 2016-04-28 | 2016-04-28 | 8, 20 | 4d |
| 43 |  | Crear boton de enlace | 1d | 2016-04-28 | 2016-04-28 | 8, 20 | 4d |
| 44 |  | Crear formulario para que el prospecto sea contactado | 1d | 2016-04-28 | 2016-04-28 | 8, 20 | 4d |
| 45 | 1.2.2 | **Back-end** | 6d | 2016-04-28 | 2016-05-05 |  | 1d |
| 46 | 1.2.2.1 | **TDC** | 2d | 2016-04-28 | 2016-04-29 | 8 | 1d |
| 47 |  | Realizacion de calculo de la oferta | 1d | 2016-04-28 | 2016-04-28 | 9 | 2d |
| 48 |  | Demostracion del calculo de pagos a plazos | 1d | 2016-04-28 | 2016-04-28 | 10 | 2d |
| 49 | 1.2.2.1.3 | **Boton de tramite de TDC** | 1d | 2016-04-28 | 2016-04-28 | 10 | 1d |
| 50 |  | Mostrar Pop-ups de la documentacion para tramite de la tarjeta en sucursal | 1d | 2016-04-28 | 2016-04-28 | 10 | 1d |
| 51 | 1.2.2.1.4 | **Boton Legal** | 1d | 2016-04-29 | 2016-04-29 | 50 | 1d |
| 52 |  | Mostrar la informacion legal de la promocion | 1d | 2016-04-29 | 2016-04-29 | 50 | 1d |
| 53 | 1.2.2.1.5 | **Boton de enviar informacion** | 1d | 2016-04-29 | 2016-04-29 | 50 | 1d |
| 54 |  | Mostrar formulario para que el prospecto sea contactado | 1d | 2016-04-29 | 2016-04-29 | 50 | 1d |
| 55 | 1.2.2.2 | **Hipotecario** | 2d | 2016-05-02 | 2016-05-03 | 20, 46 | 1d |
| 56 |  | Realizacion de calculo de la oferta | 1d | 2016-05-02 | 2016-05-02 |  | 2d |
| 57 |  | Demostracion del calculo de pagos a plazos | 1d | 2016-05-02 | 2016-05-02 |  | 2d |
| 58 | 1.2.2.2.3 | **Boton de tramite de credito hipotecario** | 1d | 2016-05-02 | 2016-05-02 |  | 1d |
| 59 |  | Mostrar Pop-ups de la documentacion para tramite de la tarjeta en sucursal | 1d | 2016-05-02 | 2016-05-02 |  | 1d |
| 60 | 1.2.2.2.4 | **Boton Legal** | 1d | 2016-05-03 | 2016-05-03 | 59 | 1d |
| 61 |  | Mostrar la informacion legal de la promocion | 1d | 2016-05-03 | 2016-05-03 | 59 | 1d |
| 62 | 1.2.2.2.5 | **Boton de enviar informacion** | 1d | 2016-05-03 | 2016-05-03 | 59 | 1d |
| 63 |  | Mostrar formulario para que el prospecto sea contactado | 1d | 2016-05-03 | 2016-05-03 | 59 | 1d |
| 64 | 1.2.2.3 | **Nomina** | 2d | 2016-05-04 | 2016-05-05 | 55, 33 | 1d |
| 65 |  | Realizacion de calculo de la oferta | 1d | 2016-05-04 | 2016-05-04 |  | 2d |
| 66 |  | Demostracion del calculo de pagos a plazos | 1d | 2016-05-04 | 2016-05-04 |  | 2d |
| 67 | 1.2.2.3.3 | **Boton de tramite de credito de nomina** | 1d | 2016-05-04 | 2016-05-04 |  | 1d |
| 68 |  | Mostrar Pop-ups de la documentacion para tramite de la tarjeta en sucursal | 1d | 2016-05-04 | 2016-05-04 |  | 1d |
| 69 | 1.2.2.3.4 | **Boton Legal** | 1d | 2016-05-05 | 2016-05-05 | 68 | 1d |
| 70 |  | Mostrar la informacion legal de la promocion | 1d | 2016-05-05 | 2016-05-05 | 68 | 1d |

| ID | WBS | Task | Duration | Start | Finish | Predecessors | Total float | Constraint |
| --- | --- | --- | --- | --- | --- | --- | --- | --- |
| 71 | 1.2.2.3.5 | **Boton de enviar informacion** | 1d | 2016-05-05 | 2016-05-05 | 68 | 1d |  |
| 72 |  | Mostrar formulario para que el prospecto sea contactado | 1d | 2016-05-05 | 2016-05-05 | 68 | 1d |  |
| 73 |  | Esquema de autorizacion | 1d | 2016-04-26 | 2016-04-26 |  | 8d |  |
| 74 | 1.4 | **Panel de Administración** | 9d | 2016-04-26 | 2016-05-06 |  | 0d |  |
| 75 | 1.4.1 | **Diseño de la interfaz del panel** | 9d | 2016-04-26 | 2016-05-06 |  | 0d |  |
| 76 | 1.4.1.1 | **Front-end** | 6d | 2016-04-26 | 2016-05-03 |  | 0d |  |
| 77 |  | Diseño del menu | 2d | 2016-04-26 | 2016-04-27 |  | 0d |  |
| 78 |  | Crear interfaz de inicio de sesión Login | 1d | 2016-04-26 | 2016-04-26 |  | 4d |  |
| 79 | 1.4.1.1.3 | **Crear interfaz de usuarios** | 1d | 2016-04-27 | 2016-04-27 | 78 | 4d |  |
| 80 |  | Altas | 1d | 2016-04-27 | 2016-04-27 | 78 | 6d |  |
| 81 |  | Bajas | 1d | 2016-04-27 | 2016-04-27 | 78 | 6d |  |
| 82 |  | Modificaciones | 1d | 2016-04-27 | 2016-04-27 | 78 | 4d |  |
| 83 |  | Crear Interfaz de Activar/desactivar Banner | 1d | 2016-04-28 | 2016-04-28 | 77 | 0d |  |
| 84 |  | Crear interfaz de estadisticas y actividades del usuario | 3d | 2016-04-29 | 2016-05-03 | 83 | 0d |  |
| 85 |  | Crear botón con función de cerrar sesión | 1d | 2016-04-28 | 2016-04-28 | 82 | 4d |  |
| 86 |  | Interfaz para administración de variables | 1d | 2016-04-29 | 2016-04-29 | 85 | 4d |  |
| 87 | 1.4.1.2 | **Back-end** | 8d | 2016-04-27 | 2016-05-06 |  | 0d |  |
| 88 |  | Validación del login | 1d | 2016-04-27 | 2016-04-27 | 78 | 7d | start no earlier than 2016-04-20 |
| 89 |  | Administración de usuarios | 1d | 2016-04-28 | 2016-04-28 | 79 | 6d |  |
| 90 |  | Control de banner activar/desactivar | 1d | 2016-04-29 | 2016-04-29 | 83 | 5d |  |
| 91 |  | Control de estadisticas y actividades del usuario | 3d | 2016-05-04 | 2016-05-06 | 84 | 0d |  |
| 92 |  | Administración de variables | 1d | 2016-05-02 | 2016-05-02 | 86 | 4d |  |

## Version 2 (saved 2016-04-26)

Note of the change: Actualización al plan de trabajo

Last finish 2016-05-06 → 2016-05-05 (-1d).

Added:

| ID | Task | Duration | Start | Finish | Predecessors | Resources |
| --- | --- | --- | --- | --- | --- | --- |
| 93 | Conocer y analizar la estructura organizacional de Afirme | 1d | 2016-05-02 | 2016-05-02 |  | Angel Gurrola; Saúl González |
| 94 | Definir el flujo de la información | 1d | 2016-05-03 | 2016-05-03 | 93 | Angel Gurrola; Saúl González |
| 95 | Implementar el esquema de autorización | 2d | 2016-05-04 | 2016-05-05 | 94 | Angel Gurrola; Saúl González |

Changed:

| ID | Task | Start | Finish | Duration | Total float |
| --- | --- | --- | --- | --- | --- |
| 1 | **Proyecto Simulador de Captacion** | 2016-04-26 → 2016-04-19 (-7d) | 2016-05-06 → 2016-05-05 (-1d) | 9d → 13d | none → 0d |
| 2 | **Diseño de banner** | 2016-04-26 → 2016-04-19 (-7d) | 2016-04-29 → 2016-04-22 (-7d) |  | 5d → 9d |
| 3 | Boceto del banner | 2016-04-26 → 2016-04-19 (-7d) | 2016-04-26 → 2016-04-19 (-7d) |  | 5d → 9d |
| 4 | Recopilación y retoque de imágenes para el banner | 2016-04-27 → 2016-04-20 (-7d) | 2016-04-28 → 2016-04-21 (-7d) |  | 5d → 9d |
| 5 | Integración y armado del banner | 2016-04-29 → 2016-04-22 (-7d) | 2016-04-29 → 2016-04-22 (-7d) |  | 5d → 9d |
| 6 | **Diseño de interfaces** | 2016-04-26 → 2016-04-19 (-7d) | 2016-05-05 → 2016-04-28 (-7d) |  | 1d → 5d |
| 7 | **Front-end** | 2016-04-26 → 2016-04-19 (-7d) | 2016-04-28 → 2016-04-21 (-7d) |  | 1d → 5d |
| 8 | **TDC** | 2016-04-26 → 2016-04-19 (-7d) | 2016-04-27 → 2016-04-20 (-7d) |  | 1d → 5d |
| 9 | Creacion de campos de captura | 2016-04-26 → 2016-04-19 (-7d) | 2016-04-26 → 2016-04-19 (-7d) |  | 2d → 3d |
| 10 | Demostracion del calculo de pagos a plazos | 2016-04-26 → 2016-04-19 (-7d) | 2016-04-26 → 2016-04-19 (-7d) |  | 2d → 3d |
| 11 | **Boton de tramite de TDC** | 2016-04-26 → 2016-04-19 (-7d) | 2016-04-26 → 2016-04-19 (-7d) |  | 1d → 5d |
| 12 | Crear boton de enlace | 2016-04-26 → 2016-04-19 (-7d) | 2016-04-26 → 2016-04-19 (-7d) |  | 1d → 2d |
| 13 | Crear Pop-ups de la documentacion para tramite de la tarjeta en sucursal | 2016-04-26 → 2016-04-19 (-7d) | 2016-04-26 → 2016-04-19 (-7d) |  | 1d → 2d |
| 14 | **Boton Legal** | 2016-04-27 → 2016-04-20 (-7d) | 2016-04-27 → 2016-04-20 (-7d) |  | 1d → 5d |
| 15 | Crear boton de enlace | 2016-04-27 → 2016-04-20 (-7d) | 2016-04-27 → 2016-04-20 (-7d) |  | 1d → 5d |
| 16 | Crear la informacion legal de la promocion | 2016-04-27 → 2016-04-20 (-7d) | 2016-04-27 → 2016-04-20 (-7d) |  | 1d → 5d |
| 17 | **Boton de enviar informacion** | 2016-04-27 → 2016-04-20 (-7d) | 2016-04-27 → 2016-04-20 (-7d) |  | 1d → 5d |
| 18 | Crear boton de enlace | 2016-04-27 → 2016-04-20 (-7d) | 2016-04-27 → 2016-04-20 (-7d) |  | 1d → 5d |
| 19 | Crear formulario para que el prospecto sea contactado | 2016-04-27 → 2016-04-20 (-7d) | 2016-04-27 → 2016-04-20 (-7d) |  | 1d → 5d |
| 20 | **Hipotecario** | 2016-04-26 → 2016-04-19 (-7d) | 2016-04-27 → 2016-04-20 (-7d) |  | 3d → 7d |
| 21 | Creacion de campos de captura | 2016-04-26 → 2016-04-19 (-7d) | 2016-04-26 → 2016-04-19 (-7d) |  | 4d → 8d |
| 22 | Creacion de campos a seleccionar (3) | 2016-04-26 → 2016-04-19 (-7d) | 2016-04-26 → 2016-04-19 (-7d) |  | 4d → 8d |
| 23 | Demostracion del calculo de pagos a plazos | 2016-04-26 → 2016-04-19 (-7d) | 2016-04-26 → 2016-04-19 (-7d) |  | 3d → 7d |
| 24 | **Boton de tramite de credito hipotecario** | 2016-04-27 → 2016-04-20 (-7d) | 2016-04-27 → 2016-04-20 (-7d) |  | 3d → 7d |
| 25 | Crear boton de enlace | 2016-04-27 → 2016-04-20 (-7d) | 2016-04-27 → 2016-04-20 (-7d) |  | 3d → 7d |
| 26 | Crear Pop-ups de la documentacion para tramite de la tarjeta en sucursal | 2016-04-27 → 2016-04-20 (-7d) | 2016-04-27 → 2016-04-20 (-7d) |  | 3d → 7d |
| 27 | **Boton Legal** | 2016-04-27 → 2016-04-20 (-7d) | 2016-04-27 → 2016-04-20 (-7d) |  | 3d → 7d |
| 28 | Crear boton de enlace | 2016-04-27 → 2016-04-20 (-7d) | 2016-04-27 → 2016-04-20 (-7d) |  | 3d → 7d |
| 29 | Crear la informacion legal de la promocion | 2016-04-27 → 2016-04-20 (-7d) | 2016-04-27 → 2016-04-20 (-7d) |  | 3d → 7d |
| 30 | **Boton de enviar informacion** | 2016-04-27 → 2016-04-20 (-7d) | 2016-04-27 → 2016-04-20 (-7d) |  | 3d → 7d |
| 31 | Crear boton de enlace | 2016-04-27 → 2016-04-20 (-7d) | 2016-04-27 → 2016-04-20 (-7d) |  | 3d → 7d |
| 32 | Crear formulario para que el prospecto sea contactado | 2016-04-27 → 2016-04-20 (-7d) | 2016-04-27 → 2016-04-20 (-7d) |  | 3d → 7d |
| 33 | **Nomina** | 2016-04-28 → 2016-04-21 (-7d) | 2016-04-28 → 2016-04-21 (-7d) |  | 4d → 8d |
| 34 | Creacion de campos de captura | 2016-04-28 → 2016-04-21 (-7d) | 2016-04-28 → 2016-04-21 (-7d) |  | 4d → 8d |
| 35 | Demostracion del calculo de pagos a plazos | 2016-04-28 → 2016-04-21 (-7d) | 2016-04-28 → 2016-04-21 (-7d) |  | 4d → 8d |
| 36 | **Boton de tramite de credito de nomina** | 2016-04-28 → 2016-04-21 (-7d) | 2016-04-28 → 2016-04-21 (-7d) |  | 4d → 8d |
| 37 | Crear boton de enlace | 2016-04-28 → 2016-04-21 (-7d) | 2016-04-28 → 2016-04-21 (-7d) |  | 4d → 8d |
| 38 | Crear Pop-ups de la documentacion para tramite de la tarjeta en sucursal | 2016-04-28 → 2016-04-21 (-7d) | 2016-04-28 → 2016-04-21 (-7d) |  | 4d → 8d |
| 39 | **Boton Legal** | 2016-04-28 → 2016-04-21 (-7d) | 2016-04-28 → 2016-04-21 (-7d) |  | 4d → 8d |
| 40 | Crear boton de enlace | 2016-04-28 → 2016-04-21 (-7d) | 2016-04-28 → 2016-04-21 (-7d) |  | 4d → 8d |
| 41 | Crear la informacion legal de la promocion | 2016-04-28 → 2016-04-21 (-7d) | 2016-04-28 → 2016-04-21 (-7d) |  | 4d → 8d |
| 42 | **Boton de enviar informacion** | 2016-04-28 → 2016-04-21 (-7d) | 2016-04-28 → 2016-04-21 (-7d) |  | 4d → 8d |
| 43 | Crear boton de enlace | 2016-04-28 → 2016-04-21 (-7d) | 2016-04-28 → 2016-04-21 (-7d) |  | 4d → 8d |
| 44 | Crear formulario para que el prospecto sea contactado | 2016-04-28 → 2016-04-21 (-7d) | 2016-04-28 → 2016-04-21 (-7d) |  | 4d → 8d |
| 45 | **Back-end** | 2016-04-28 → 2016-04-21 (-7d) | 2016-05-05 → 2016-04-28 (-7d) |  | 1d → 5d |
| 46 | **TDC** | 2016-04-28 → 2016-04-21 (-7d) | 2016-04-29 → 2016-04-22 (-7d) |  | 1d → 5d |
| 47 | Realizacion de calculo de la oferta | 2016-04-28 → 2016-04-21 (-7d) | 2016-04-28 → 2016-04-21 (-7d) |  | 2d → 6d |
| 48 | Demostracion del calculo de pagos a plazos | 2016-04-28 → 2016-04-21 (-7d) | 2016-04-28 → 2016-04-21 (-7d) |  | 2d → 6d |
| 49 | **Boton de tramite de TDC** | 2016-04-28 → 2016-04-21 (-7d) | 2016-04-28 → 2016-04-21 (-7d) |  | 1d → 5d |
| 50 | Mostrar Pop-ups de la documentacion para tramite de la tarjeta en sucursal | 2016-04-28 → 2016-04-21 (-7d) | 2016-04-28 → 2016-04-21 (-7d) |  | 1d → 5d |
| 51 | **Boton Legal** | 2016-04-29 → 2016-04-22 (-7d) | 2016-04-29 → 2016-04-22 (-7d) |  | 1d → 5d |
| 52 | Mostrar la informacion legal de la promocion | 2016-04-29 → 2016-04-22 (-7d) | 2016-04-29 → 2016-04-22 (-7d) |  | 1d → 5d |
| 53 | **Boton de enviar informacion** | 2016-04-29 → 2016-04-22 (-7d) | 2016-04-29 → 2016-04-22 (-7d) |  | 1d → 5d |
| 54 | Mostrar formulario para que el prospecto sea contactado | 2016-04-29 → 2016-04-22 (-7d) | 2016-04-29 → 2016-04-22 (-7d) |  | 1d → 5d |
| 55 | **Hipotecario** | 2016-05-02 → 2016-04-25 (-7d) | 2016-05-03 → 2016-04-26 (-7d) |  | 1d → 5d |
| 56 | Realizacion de calculo de la oferta | 2016-05-02 → 2016-04-25 (-7d) | 2016-05-02 → 2016-04-25 (-7d) |  | 2d → 6d |
| 57 | Demostracion del calculo de pagos a plazos | 2016-05-02 → 2016-04-25 (-7d) | 2016-05-02 → 2016-04-25 (-7d) |  | 2d → 6d |
| 58 | **Boton de tramite de credito hipotecario** | 2016-05-02 → 2016-04-25 (-7d) | 2016-05-02 → 2016-04-25 (-7d) |  | 1d → 5d |
| 59 | Mostrar Pop-ups de la documentacion para tramite de la tarjeta en sucursal | 2016-05-02 → 2016-04-25 (-7d) | 2016-05-02 → 2016-04-25 (-7d) |  | 1d → 5d |
| 60 | **Boton Legal** | 2016-05-03 → 2016-04-26 (-7d) | 2016-05-03 → 2016-04-26 (-7d) |  | 1d → 5d |
| 61 | Mostrar la informacion legal de la promocion | 2016-05-03 → 2016-04-26 (-7d) | 2016-05-03 → 2016-04-26 (-7d) |  | 1d → 5d |
| 62 | **Boton de enviar informacion** | 2016-05-03 → 2016-04-26 (-7d) | 2016-05-03 → 2016-04-26 (-7d) |  | 1d → 5d |
| 63 | Mostrar formulario para que el prospecto sea contactado | 2016-05-03 → 2016-04-26 (-7d) | 2016-05-03 → 2016-04-26 (-7d) |  | 1d → 5d |
| 64 | **Nomina** | 2016-05-04 → 2016-04-27 (-7d) | 2016-05-05 → 2016-04-28 (-7d) |  | 1d → 5d |
| 65 | Realizacion de calculo de la oferta | 2016-05-04 → 2016-04-27 (-7d) | 2016-05-04 → 2016-04-27 (-7d) |  | 2d → 6d |
| 66 | Demostracion del calculo de pagos a plazos | 2016-05-04 → 2016-04-27 (-7d) | 2016-05-04 → 2016-04-27 (-7d) |  | 2d → 6d |
| 67 | **Boton de tramite de credito de nomina** | 2016-05-04 → 2016-04-27 (-7d) | 2016-05-04 → 2016-04-27 (-7d) |  | 1d → 5d |
| 68 | Mostrar Pop-ups de la documentacion para tramite de la tarjeta en sucursal | 2016-05-04 → 2016-04-27 (-7d) | 2016-05-04 → 2016-04-27 (-7d) |  | 1d → 5d |
| 69 | **Boton Legal** | 2016-05-05 → 2016-04-28 (-7d) | 2016-05-05 → 2016-04-28 (-7d) |  | 1d → 5d |
| 70 | Mostrar la informacion legal de la promocion | 2016-05-05 → 2016-04-28 (-7d) | 2016-05-05 → 2016-04-28 (-7d) |  | 1d → 5d |

| ID | Task | Start | Finish | Duration | Total float | Predecessors | Other |
| --- | --- | --- | --- | --- | --- | --- | --- |
| 71 | **Boton de enviar informacion** | 2016-05-05 → 2016-04-28 (-7d) | 2016-05-05 → 2016-04-28 (-7d) |  | 1d → 5d |  |  |
| 72 | Mostrar formulario para que el prospecto sea contactado | 2016-05-05 → 2016-04-28 (-7d) | 2016-05-05 → 2016-04-28 (-7d) |  | 1d → 5d |  |  |
| 73 | **Panel de Administración** | 2016-04-26 → 2016-04-19 (-7d) | 2016-05-06 → 2016-04-29 (-7d) |  |  |  |  |
| 74 | **Diseño de la interfaz del panel** | 2016-04-26 → 2016-04-19 (-7d) | 2016-05-06 → 2016-04-29 (-7d) |  |  |  |  |
| 75 | **Front-end** | 2016-04-26 → 2016-04-19 (-7d) | 2016-05-03 → 2016-04-26 (-7d) |  |  |  |  |
| 76 | Diseño del menu | 2016-04-26 → 2016-04-19 (-7d) | 2016-04-27 → 2016-04-20 (-7d) |  |  |  |  |
| 77 | Crear interfaz de inicio de sesión Login | 2016-04-26 → 2016-04-19 (-7d) | 2016-04-26 → 2016-04-19 (-7d) |  |  |  |  |
| 78 | **Crear interfaz de usuarios** | 2016-04-27 → 2016-04-20 (-7d) | 2016-04-27 → 2016-04-20 (-7d) |  |  |  |  |
| 79 | Altas | 2016-04-27 → 2016-04-20 (-7d) | 2016-04-27 → 2016-04-20 (-7d) |  |  |  |  |
| 80 | Bajas | 2016-04-27 → 2016-04-20 (-7d) | 2016-04-27 → 2016-04-20 (-7d) |  |  |  |  |
| 81 | Modificaciones | 2016-04-27 → 2016-04-20 (-7d) | 2016-04-27 → 2016-04-20 (-7d) |  |  |  |  |
| 82 | Crear Interfaz de Activar/desactivar Banner | 2016-04-28 → 2016-04-21 (-7d) | 2016-04-28 → 2016-04-21 (-7d) |  |  |  |  |
| 83 | Crear interfaz de estadisticas y actividades del usuario | 2016-04-29 → 2016-04-22 (-7d) | 2016-05-03 → 2016-04-26 (-7d) |  |  |  |  |
| 84 | Crear botón con función de cerrar sesión | 2016-04-28 → 2016-04-21 (-7d) | 2016-04-28 → 2016-04-21 (-7d) |  |  |  |  |
| 85 | Interfaz para administración de variables | 2016-04-29 → 2016-04-22 (-7d) | 2016-04-29 → 2016-04-22 (-7d) |  |  |  |  |
| 86 | **Back-end** | 2016-04-27 → 2016-04-20 (-7d) | 2016-05-06 → 2016-04-29 (-7d) |  |  |  |  |
| 87 | Validación del login | 2016-04-27 → 2016-04-20 (-7d) | 2016-04-27 → 2016-04-20 (-7d) |  |  |  |  |
| 88 | Administración de usuarios | 2016-04-28 → 2016-04-21 (-7d) | 2016-04-28 → 2016-04-21 (-7d) |  |  |  |  |
| 89 | Control de banner activar/desactivar | 2016-04-29 → 2016-04-22 (-7d) | 2016-04-29 → 2016-04-22 (-7d) |  |  |  |  |
| 90 | Control de estadisticas y actividades del usuario | 2016-05-04 → 2016-04-27 (-7d) | 2016-05-06 → 2016-04-29 (-7d) |  |  |  |  |
| 91 | Administración de variables | 2016-05-02 → 2016-04-25 (-7d) | 2016-05-02 → 2016-04-25 (-7d) |  |  |  |  |
| 92 | **Esquema de autorizacion** | 2016-04-26 → 2016-05-02 (+6d) | 2016-04-26 → 2016-05-05 (+9d) | 1d → 4d | 8d → 0d | none → 73 | resources none → Angel Gurrola; Saúl González |
